Schedule from ProjectLibre, 2000-01-03 to 2001-04-26.

## Calendars

- Standard[Imported]: Mon-Fri 08:00-12:00, 13:00-17:00; Sat-Sun off.

## Resources

| Resource |
| --- |
| 未割り当て |
| G.C. General Management |
| G.C. Project Management |
| G.C. Procurement |
| G.C. Scheduler |
| G.C. Accounting |
| G.C. Superintendent |
| G.C. Survey Crew |
| G.C. Rough Carpenter Crew |
| G.C. Labor Crew |
| G.C. Concrete Crew |
| G.C. Finish Carpenter Crew |
| Site Grading Contractor |
| Plumbing Contractor |
| Plumbing Contractor Management |
| Electric Contractor |
| Electric Contractor Management |
| HVAC Contractor |
| HVAC Contractor Management |
| Elevator Contractor |
| Elevator Contractor Management |
| Steel Erection Contractor |
| Steel Erection Contractor Management |
| Drywall Contractor |
| Masonry Contractor |
| Tile Contractor |
| Roofing Contractor |
| Roofing Contractor Management |
| Window Contractor |
| Carpet Contractor |
| Landscape Contractor |
| Paving Contractor |
| Painting Contractor |

## Schedule

| ID | WBS | Task | Duration | Start | Finish | Predecessors | Complete | Resources |
| --- | --- | --- | --- | --- | --- | --- | --- | --- |
| 1 | 1 | **Three-story Office Building (76,000 square feet)** | 344d | 2000-01-03 | 2001-04-26 |  |  |  |
| 2 | 1.1 | **General Conditions** | 17d | 2000-01-03 | 2000-01-25 |  | 9% |  |
| 3 | 1.1.1 | Receive notice to proceed and sign contract | 3d | 2000-01-03 | 2000-01-05 |  |  | G.C. General Management |
| 4 | 1.1.2 | Submit bond and insurance documents | 2d | 2000-01-06 | 2000-01-07 | 3 | 100% | G.C. Project Management; G.C. General Management [25%] |
| 5 | 1.1.3 | Prepare and submit project schedule | 2d | 2000-01-10 | 2000-01-11 | 4 |  | G.C. Project Management [25%]; G.C. Scheduler |
| 6 | 1.1.4 | Prepare and submit schedule of values | 2d | 2000-01-12 | 2000-01-13 | 5 |  | G.C. General Management [10%]; G.C. Project Management |
| 7 | 1.1.5 | Obtain building permits | 4d | 2000-01-06 | 2000-01-11 | 3 |  | G.C. Project Management [50%]; G.C. Procurement [50%] |
| 8 | 1.1.6 | Submit preliminary shop drawings | 10d | 2000-01-12 | 2000-01-25 | 7 |  | G.C. Project Management [50%]; G.C. Procurement [50%] |
| 9 | 1.1.7 | Submit monthly requests for payment | 1d | 2000-01-06 | 2000-01-06 | 3 |  |  |
| 10 | 1.2 | **Long Lead Procurement** | 70d | 2000-01-07 | 2000-04-13 |  |  |  |
| 11 | 1.2.1 | Submit shop drawings and order long lead items - steel | 10d | 2000-01-07 | 2000-01-20 | 9 |  | Steel Erection Contractor Management |
| 12 | 1.2.2 | Submit shop drawings and order long lead items - roofing | 10d | 2000-01-26 | 2000-02-08 | 8 |  | Roofing Contractor Management |
| 13 | 1.2.3 | Submit shop drawings and order long lead items - elevator | 10d | 2000-01-26 | 2000-02-08 | 8 |  | Elevator Contractor Management |
| 14 | 1.2.4 | Submit shop drawings and order long lead items - plumbing | 10d | 2000-01-26 | 2000-02-08 | 8 |  | Plumbing Contractor Management |
| 15 | 1.2.5 | Submit shop drawings and order long lead items - electric | 10d | 2000-01-26 | 2000-02-08 | 8 |  | Electric Contractor Management |
| 16 | 1.2.6 | Submit shop drawings and order long lead items - HVAC | 10d | 2000-01-26 | 2000-02-08 | 8 |  | HVAC Contractor Management |
| 17 | 1.2.7 | Detail, fabricate and deliver steel | 60d | 2000-01-21 | 2000-04-13 | 11 |  | Steel Erection Contractor Management [50%]; Steel Erection Contractor [50%] |
| 18 | 1.3 | **Mobilize on Site** | 10d | 2000-01-06 | 2000-01-19 |  |  |  |
| 19 | 1.3.1 | Install temporary power | 2d | 2000-01-06 | 2000-01-07 | 3 |  | Electric Contractor |
| 20 | 1.3.2 | Install temporary water service | 2d | 2000-01-06 | 2000-01-07 | 3 |  | Plumbing Contractor |
| 21 | 1.3.3 | Set up site office | 3d | 2000-01-10 | 2000-01-12 | 19, 20 |  | G.C. Superintendent; G.C. Labor Crew [10%] |
| 22 | 1.3.4 | Set line and grade benchmarks | 3d | 2000-01-13 | 2000-01-17 | 21 |  | G.C. Survey Crew |
| 23 | 1.3.5 | Prepare site - lay down yard and temporary fencing | 2d | 2000-01-18 | 2000-01-19 | 22 |  | Site Grading Contractor; G.C. Labor Crew [10%] |
| 24 | 1.4 | **Site Grading and Utilities** | 35d | 2000-01-20 | 2000-03-08 |  |  |  |
| 25 | 1.4.1 | Clear and grub site | 3d | 2000-01-20 | 2000-01-24 | 21, 23 |  | Site Grading Contractor |
| 26 | 1.4.2 | Stone site access and temporary parking area | 2d | 2000-01-25 | 2000-01-26 | 25, 23 |  | Site Grading Contractor |
| 27 | 1.4.3 | Rough grade site (cut and fill) | 5d | 2000-01-27 | 2000-02-02 | 26 |  | Site Grading Contractor |
| 28 | 1.4.4 | Install storm drainage | 10d | 2000-02-03 | 2000-02-16 | 27 |  | Site Grading Contractor |
| 29 | 1.4.5 | Install exterior fire line and building fire riser | 10d | 2000-02-03 | 2000-02-16 | 27 |  | Plumbing Contractor |
| 30 | 1.4.6 | Perform final site grading | 10d | 2000-02-17 | 2000-03-01 | 28FF+1d, 29 |  | Site Grading Contractor |
| 31 | 1.4.7 | Erect building batter boards and layout building | 5d | 2000-03-02 | 2000-03-08 | 30 |  | G.C. Survey Crew |

Notes:
- 9: Monthly requests for payment can be entered as a recurring task. See the Help topic "Enter a recurring task."

| ID | WBS | Task | Duration | Start | Finish | Predecessors | Resources |
| --- | --- | --- | --- | --- | --- | --- | --- |
| 32 | 1.5 | **Foundations** | 33d | 2000-03-09 | 2000-04-24 |  |  |
| 33 | 1.5.1 | Excavate foundations | 10d | 2000-03-09 | 2000-03-22 | 31 | Site Grading Contractor [50%] |
| 34 | 1.5.2 | Excavate elevator pit | 2d | 2000-03-09 | 2000-03-10 | 31 | Site Grading Contractor |
| 35 | 1.5.3 | Form column piers and spread foundations | 4d | 2000-03-23 | 2000-03-28 | 33 | G.C. Rough Carpenter Crew |
| 36 | 1.5.4 | Rough-in electric and plumbing in elevator | 4d | 2000-03-13 | 2000-03-16 | 34 | Plumbing Contractor; Electric Contractor |
| 37 | 1.5.5 | Form elevator pit walls | 4d | 2000-03-17 | 2000-03-22 | 36 | G.C. Rough Carpenter Crew |
| 38 | 1.5.6 | Set reinforcing and anchor bolts | 4d | 2000-03-29 | 2000-04-03 | 35 | G.C. Rough Carpenter Crew |
| 39 | 1.5.7 | Pour column piers and foundations | 5d | 2000-04-04 | 2000-04-10 | 38 | G.C. Concrete Crew |
| 40 | 1.5.8 | Pour concrete elevator walls | 1d | 2000-03-23 | 2000-03-23 | 37 | G.C. Concrete Crew |
| 41 | 1.5.9 | Cure elevator wall concrete | 7d | 2000-03-24 | 2000-04-03 | 40 | G.C. Labor Crew [10%] |
| 42 | 1.5.10 | Cure piers and foundations | 7d | 2000-04-11 | 2000-04-19 | 39 | G.C. Labor Crew [10%] |
| 43 | 1.5.11 | Strip wall forms | 1d | 2000-04-04 | 2000-04-04 | 41 | G.C. Labor Crew [10%] |
| 44 | 1.5.12 | Strip column piers and foundation forms | 3d | 2000-04-20 | 2000-04-24 | 42 | G.C. Labor Crew |
| 45 | 1.5.13 | Install pneumatic tube in elevator pit | 3d | 2000-04-05 | 2000-04-07 | 43 | Elevator Contractor |
| 46 | 1.5.14 | Prepare and pour concrete floor in elevator pit | 1d | 2000-04-10 | 2000-04-10 | 45 | G.C. Concrete Crew |
| 47 | 1.6 | **Steel Erection** | 45d | 2000-04-25 | 2000-06-26 |  |  |
| 48 | 1.6.1 | Erect steel columns, beams and joist - 1st and 2nd floors | 10d | 2000-04-25 | 2000-05-08 | 44, 17 | Steel Erection Contractor |
| 49 | 1.6.2 | Erect steel columns, beams and joist - 3rd floor and roof | 10d | 2000-05-09 | 2000-05-22 | 48 | Steel Erection Contractor |
| 50 | 1.6.3 | Install miscellaneous iron and bracing - 1st and 2nd floors | 10d | 2000-05-09 | 2000-05-22 | 48 | Steel Erection Contractor [75%] |
| 51 | 1.6.4 | Install miscellaneous iron and bracing - 3rd floor and roof | 10d | 2000-05-23 | 2000-06-05 | 49 | Steel Erection Contractor [75%] |
| 52 | 1.6.5 | Install stairs and miscellaneous iron railing | 10d | 2000-06-06 | 2000-06-19 | 51 | Steel Erection Contractor [50%] |
| 53 | 1.6.6 | Touch-up paint on steel | 5d | 2000-06-20 | 2000-06-26 | 52 | Steel Erection Contractor [20%] |
| 54 | 1.7 | **Form and Pour Concrete - Floors and Roof** | 85d | 2000-05-09 | 2000-09-04 |  |  |
| 55 | 1.7.1 | Form 2nd floor including all floor openings | 5d | 2000-06-27 | 2000-07-03 | 53, 14, 15, 16, 48 | G.C. Rough Carpenter Crew; G.C. Labor Crew [20%] |
| 56 | 1.7.2 | Install rebar and in-floor utilities (including mechanical, electrical, plumbing) | 5d | 2000-05-09 | 2000-05-15 | 48 | G.C. Labor Crew [33%]; Plumbing Contractor [33%]; Electric Contractor [33%] |
| 57 | 1.7.3 | Pour 2nd floor slab | 4d | 2000-07-04 | 2000-07-07 | 56, 55 | G.C. Concrete Crew |
| 58 | 1.7.4 | Cure 2nd floor slab | 7d | 2000-07-10 | 2000-07-18 | 57 | G.C. Labor Crew [10%] |
| 59 | 1.7.5 | Strip forms from 2nd floor slab | 2d | 2000-07-19 | 2000-07-20 | 58 | G.C. Labor Crew |
| 60 | 1.7.6 | Form 3rd floor including all floor openings | 5d | 2000-07-19 | 2000-07-25 | 58 | G.C. Rough Carpenter Crew [50%]; G.C. Labor Crew [20%] |
| 61 | 1.7.7 | Install rebar and in-floor utilities (including mechanical, electrical, plumbing) | 5d | 2000-07-19 | 2000-07-25 | 58 | G.C. Labor Crew [33%]; Plumbing Contractor [33%]; Electric Contractor [33%] |
| 62 | 1.7.8 | Pour 3rd floor slab | 4d | 2000-07-26 | 2000-07-31 | 61, 60 | G.C. Concrete Crew |
| 63 | 1.7.9 | Cure 3rd floor slab | 7d | 2000-08-01 | 2000-08-09 | 62 | G.C. Labor Crew [10%] |
| 64 | 1.7.10 | Strip forms from 3rd floor slab | 2d | 2000-08-10 | 2000-08-11 | 63 | G.C. Labor Crew |
| 65 | 1.7.11 | Form roof slab including all floor openings | 5d | 2000-08-10 | 2000-08-16 | 63 | G.C. Rough Carpenter Crew; G.C. Labor Crew [20%] |
| 66 | 1.7.12 | Install rebar and in-floor utilities (including mechanical, electrical, plumbing) | 5d | 2000-08-10 | 2000-08-16 | 63 | G.C. Labor Crew [33%]; Plumbing Contractor [33%]; Electric Contractor [33%] |
| 67 | 1.7.13 | Pour roof slab | 4d | 2000-08-17 | 2000-08-22 | 66, 65 | G.C. Concrete Crew |
| 68 | 1.7.14 | Cure roof slab | 7d | 2000-08-23 | 2000-08-31 | 67 | G.C. Labor Crew [10%] |
| 69 | 1.7.15 | Strip forms from roof slab | 2d | 2000-09-01 | 2000-09-04 | 68 | G.C. Labor Crew |
| 70 | 1.7.16 | Form 1st floor | 4d | 2000-07-21 | 2000-07-26 | 59 | G.C. Rough Carpenter Crew |
| 71 | 1.7.17 | Install electrical underground | 5d | 2000-07-21 | 2000-07-27 | 59 | Electric Contractor |
| 72 | 1.7.18 | Install plumbing underground | 5d | 2000-07-21 | 2000-07-27 | 59 | Plumbing Contractor |
| 73 | 1.7.19 | Install rebar and in-floor utilities | 4d | 2000-07-21 | 2000-07-26 | 59 | G.C. Labor Crew [33%]; Plumbing Contractor [33%]; Electric Contractor [33%] |
| 74 | 1.7.20 | Pour 1st floor slab | 4d | 2000-07-28 | 2000-08-02 | 70, 73, 71, 72 | G.C. Concrete Crew |
| 75 | 1.7.21 | Cure 1st floor slab | 7d | 2000-08-03 | 2000-08-11 | 74 | G.C. Labor Crew [10%] |
| 76 | 1.7.22 | Strip forms from 1st floor slab | 2d | 2000-08-14 | 2000-08-15 | 75 | G.C. Labor Crew |

| ID | WBS | Task | Duration | Start | Finish | Predecessors | Resources |
| --- | --- | --- | --- | --- | --- | --- | --- |
| 77 | 1.8 | **Carpentry Work** | 15d | 2000-09-05 | 2000-09-25 |  |  |
| 78 | 1.8.1 | Install exterior sheathing and metal studs | 15d | 2000-09-05 | 2000-09-25 | 64, 69 | Drywall Contractor |
| 79 | 1.9 | **Masonry Work** | 110d | 2000-06-06 | 2000-11-06 |  |  |
| 80 | 1.9.1 | Rough-in plumbing at toilets and masonry walls | 20d | 2000-08-16 | 2000-09-12 | 76, 14 | Plumbing Contractor |
| 81 | 1.9.2 | Lay masonry at core, mechanical, and toilets | 20d | 2000-06-06 | 2000-07-03 | 50, 51 | Masonry Contractor |
| 82 | 1.9.3 | Install exterior masonry work | 25d | 2000-09-26 | 2000-10-30 | 78 | Masonry Contractor |
| 83 | 1.9.4 | Install roof drains | 2d | 2000-10-31 | 2000-11-01 | 82 | Roofing Contractor |
| 84 | 1.9.5 | Install tile in toilet rooms | 10d | 2000-09-13 | 2000-09-26 | 80 | Tile Contractor |
| 85 | 1.9.6 | Clean masonry | 5d | 2000-10-31 | 2000-11-06 | 82 | Masonry Contractor [50%] |
| 86 | 1.9.7 | Clean toilet room tile | 5d | 2000-09-27 | 2000-10-03 | 84 | Tile Contractor [50%] |
| 87 | 1.10 | **Roofing** | 31d | 2000-10-31 | 2000-12-12 |  |  |
| 88 | 1.10.1 | Install flashing at parapet walls | 4d | 2000-10-31 | 2000-11-03 | 82 | Roofing Contractor |
| 89 | 1.10.2 | Pour lightweight concrete roof fill | 2d | 2000-11-06 | 2000-11-07 | 12, 83, 88 | Roofing Contractor |
| 90 | 1.10.3 | Install seamless roofing material | 5d | 2000-11-15 | 2000-11-21 | 89FS+5d | Roofing Contractor |
| 91 | 1.10.4 | Spread stone ballast on seamless roof | 5d | 2000-11-22 | 2000-11-28 | 90 | Roofing Contractor |
| 92 | 1.10.5 | Set rooftop equipment | 10d | 2000-11-29 | 2000-12-12 | 91 | HVAC Contractor |
| 93 | 1.11 | **Window wall and store front closures** | 60d | 2000-10-31 | 2001-01-22 |  |  |
| 94 | 1.11.1 | Install window wall aluminum and glass | 25d | 2000-10-31 | 2000-12-04 | 82 | Window Contractor |
| 95 | 1.11.2 | Install interior stud walls and drywall | 25d | 2000-12-05 | 2001-01-08 | 94 | Drywall Contractor |
| 96 | 1.11.3 | Install interior doors and hardware | 10d | 2001-01-09 | 2001-01-22 | 95 | G.C. Finish Carpenter Crew |
| 97 | 1.11.4 | Install store front doors and hardware | 15d | 2000-10-31 | 2000-11-20 | 82 | Window Contractor |
| 98 | 1.12 | **Building Finishes** | 80d | 2000-12-05 | 2001-03-26 |  |  |
| 99 | 1.12.1 | Install millwork and wood trim | 15d | 2001-01-09 | 2001-01-29 | 97, 95 | G.C. Finish Carpenter Crew |
| 100 | 1.12.2 | Paint walls and woodwork | 20d | 2001-01-30 | 2001-02-26 | 99, 96 | Painting Contractor |
| 101 | 1.12.3 | Install conduit at ceiling plenum space | 15d | 2000-12-05 | 2000-12-25 | 94 | Electric Contractor |
| 102 | 1.12.4 | Install duct in ceiling plenum space | 15d | 2001-01-09 | 2001-01-29 | 95, 101 | HVAC Contractor |
| 103 | 1.12.5 | Install ceiling grid | 10d | 2001-01-30 | 2001-02-12 | 95, 102 | Drywall Contractor |
| 104 | 1.12.6 | Install ceiling tile | 10d | 2001-02-13 | 2001-02-26 | 103 | Drywall Contractor |
| 105 | 1.12.7 | Hang wallpaper | 10d | 2001-02-13 | 2001-02-26 | 103 | Painting Contractor |
| 106 | 1.12.8 | Install building carpet | 20d | 2001-02-27 | 2001-03-26 | 100 | Carpet Contractor |
| 107 | 1.12.9 | Install hardware and accessories | 15d | 2001-02-27 | 2001-03-19 | 100 | G.C. Finish Carpenter Crew |
| 108 | 1.12.10 | Complete interior and exterior sod and plantings | 10d | 2001-02-27 | 2001-03-12 | 100 | Landscape Contractor |
| 109 | 1.12.11 | Pave, curb, and stripe parking lot | 10d | 2001-03-13 | 2001-03-26 | 108 | Paving Contractor |

| ID | WBS | Task | Duration | Start | Finish | Predecessors | Resources |
| --- | --- | --- | --- | --- | --- | --- | --- |
| 110 | 1.13 | **Elevators** | 40d | 2000-07-04 | 2000-08-28 |  |  |
| 111 | 1.13.1 | Set elevator equipment in shafts | 20d | 2000-07-04 | 2000-07-31 | 81, 46, 13 | Elevator Contractor |
| 112 | 1.13.2 | Set equipment in mechanical room | 10d | 2000-08-01 | 2000-08-14 | 111 | Elevator Contractor |
| 113 | 1.13.3 | Test and align doors and equipment | 10d | 2000-08-15 | 2000-08-28 | 112 | Elevator Contractor |
| 114 | 1.14 | **Plumbing** | 90d | 2000-11-07 | 2001-03-12 |  |  |
| 115 | 1.14.1 | Rough-in plumbing in drywall walls | 20d | 2000-12-05 | 2001-01-01 | 94 | Plumbing Contractor |
| 116 | 1.14.2 | Tie-in fire line riser and set valves | 10d | 2000-11-07 | 2000-11-20 | 85 | Plumbing Contractor |
| 117 | 1.14.3 | Set plumbing fixtures and trim | 15d | 2001-01-02 | 2001-01-22 | 86, 115, 80 | Plumbing Contractor |
| 118 | 1.14.4 | Flush, test, and clean piping and fixtures | 10d | 2001-02-27 | 2001-03-12 | 100, 116, 117 | Plumbing Contractor |
| 119 | 1.15 | **Electrical** | 139d | 2000-08-16 | 2001-02-26 |  |  |
| 120 | 1.15.1 | Rough-in electrical in masonry walls | 20d | 2000-08-16 | 2000-09-12 | 76, 15 | Electric Contractor |
| 121 | 1.15.2 | Rough-in electrical in drywall walls | 20d | 2000-12-05 | 2001-01-01 | 94 | Electric Contractor |
| 122 | 1.15.3 | Pull wire in conduit and set area transformers | 15d | 2000-12-26 | 2001-01-15 | 120, 101 | Electric Contractor |
| 123 | 1.15.4 | Install and terminate electrical devices | 15d | 2001-01-16 | 2001-02-05 | 122, 121 | Electric Contractor |
| 124 | 1.15.5 | Make electrical terminations for HVAC equipment | 2d | 2001-01-16 | 2001-01-17 | 122, 92 | Electric Contractor |
| 125 | 1.15.6 | Install light fixtures - test and clean | 10d | 2001-02-13 | 2001-02-26 | 103, 123 | Electric Contractor |
| 126 | 1.16 | **Heating and Ventilating - AC** | 180d | 2000-07-04 | 2001-03-12 |  |  |
| 127 | 1.16.1 | Set equipment in mechanical room | 10d | 2000-07-04 | 2000-07-17 | 81, 16 | HVAC Contractor |
| 128 | 1.16.2 | Rough-in mechanical in masonry walls | 20d | 2000-08-16 | 2000-09-12 | 76 | HVAC Contractor |
| 129 | 1.16.3 | Rough-in mechanical in drywall walls | 10d | 2000-12-05 | 2000-12-18 | 94 | HVAC Contractor |
| 130 | 1.16.4 | Install duct in building chase | 15d | 2000-12-05 | 2000-12-25 | 127, 128, 94 | HVAC Contractor |
| 131 | 1.16.5 | Set HVAC trim and test and balance system | 20d | 2001-02-13 | 2001-03-12 | 103, 130, 124 | HVAC Contractor |
| 132 | 1.17 | **Final Clean-up and Occupancy** | 60d | 2001-01-09 | 2001-04-02 |  |  |
| 133 | 1.17.1 | Install hard tile flooring in common areas | 5d | 2001-01-09 | 2001-01-15 | 95 | Tile Contractor |
| 134 | 1.17.2 | Clean hard tile floors | 4d | 2001-01-16 | 2001-01-19 | 133 | Tile Contractor [50%] |
| 135 | 1.17.3 | Remove debris from building and do final clean-up | 4d | 2001-03-27 | 2001-03-30 | 106, 105, 107, 108, 118, 125, 104, 134 | G.C. Labor Crew |
| 136 | 1.17.4 | Substantial completion date | 1d | 2001-04-02 | 2001-04-02 | 135 | G.C. Superintendent |

| ID | WBS | Task | Duration | Start | Finish | Predecessors | Resources |
| --- | --- | --- | --- | --- | --- | --- | --- |
| 137 | 1.18 | **Complete Final Inspections** | 6d | 2001-04-02 | 2001-04-09 |  |  |
| 138 | 1.18.1 | Complete elevator inspection and certification | 3d | 2001-04-02 | 2001-04-04 | 135, 113 | Elevator Contractor |
| 139 | 1.18.2 | Perform architect's inspection | 1d | 2001-04-05 | 2001-04-05 | 135, 109, 138 | G.C. Superintendent [50%]; G.C. Project Management [50%] |
| 140 | 1.18.3 | Perform local building agency inspection | 1d | 2001-04-06 | 2001-04-06 | 139 | G.C. Project Management [50%]; G.C. Superintendent [50%] |
| 141 | 1.18.4 | Perform Fire Marshal's inspection | 1d | 2001-04-09 | 2001-04-09 | 140 | G.C. Superintendent [50%]; G.C. Project Management [50%] |
| 142 | 1.19 | Complete punch list items from all inspections | 10d | 2001-04-10 | 2001-04-23 | 141 | G.C. Superintendent [11%]; G.C. Labor Crew [11%]; Plumbing Contractor [11%]; Electric Contractor [11%]; HVAC Contractor [11%]; Drywall Contractor [11%]; Carpet Contractor [11%]; Paving Contractor [11%]; Painting Contractor [11%] |
| 143 | 1.20 | Obtain certificate of occupancy | 2d | 2001-04-24 | 2001-04-25 | 142 | G.C. Project Management |
| 144 | 1.21 | Issue final completion documents including warranties | 1d | 2001-04-24 | 2001-04-24 | 142 | G.C. Project Management |
| 145 | 1.22 | Issue final request for payment | 1d | 2001-04-26 | 2001-04-26 | 143, 144 | G.C. Project Management [33%]; G.C. Accounting [33%]; G.C. General Management [33%] |
